# 專案時程

Schedule from MS Project, 2017-05-15 to 2018-01-23.

## Calendars

- 標準: Mon-Fri 08:00-12:00, 13:00-17:00; Sat-Sun off.

## Schedule

| ID | WBS | Task | Type | Duration | Start | Finish | Total slack |
| --- | --- | --- | --- | --- | --- | --- | --- |
| 1 | 1 | **專案規劃階段** |  | 22d | 2017-05-16 | 2017-06-14 | 0d |
| 2 | 1.1 | 專案啟動會議 | manual | 1d | 2017-05-22 | 2017-05-22 |  |
| 3 | 1.2 | 與警政署合約簽訂 | manual | 12d | 2017-05-16 | 2017-05-31 |  |
| 4 | 1.3 | 專案管理計畫書撰寫與審查 | manual | 21d | 2017-05-16 | 2017-06-13 |  |
| 5 | 1.4 | 專案管理計畫書交付 | manual | 1d | 2017-06-14 | 2017-06-14 |  |
| 6 | 2 | **門號、電路** |  | 80d | 2017-07-10 | 2017-10-27 | 0d |
| 7 | 2.1 | 行分備妥門號與 sim卡 | manual | 12d | 2017-09-15 | 2017-09-30 |  |
| 8 | 2.2 | 門號MDVPN設定 | manual | 5d | 2017-10-23 | 2017-10-27 |  |
| 9 | 2.3 | IP-VPN電路申裝(雲嘉嘉) | manual | 16d | 2017-07-10 | 2017-07-31 |  |
| 10 | 3 | **行動載具** |  | 117d | 2017-05-22 | 2017-10-31 | 0d |
| 11 | 3.1 | 行動載具型號及配件規格確認 | manual | 30d | 2017-05-22 | 2017-06-30 |  |
| 12 | 3.2 | 行動載具/配件備貨 | manual | 82d | 2017-07-10 | 2017-10-31 |  |
| 13 | 4 | **系統軟硬體安裝** |  | 43d | 2017-05-22 | 2017-07-19 |  |
| 14 | 4.1 | 系統軟硬體規格需求討論 | manual | 30d | 2017-05-22 | 2017-06-30 |  |
| 15 | 4.2 | 系統軟硬體規格書撰寫與審查 | manual | 13d | 2017-07-01 | 2017-07-18 |  |
| 16 | 4.3 | 系統軟硬體規格書交付 | manual | 1d | 2017-07-19 | 2017-07-19 |  |
| 17 | 4.4 | 設備進場（含機櫃） | manual | 4d | 2017-05-22 | 2017-05-25 |  |
| 18 | 4.5 | 完成名稱節點伺服器安裝 | manual | 15d | 2017-05-22 | 2017-06-09 |  |
| 19 | 4.6 | 完成數據節點伺服器安裝 | manual | 15d | 2017-05-22 | 2017-06-09 |  |
| 20 | 4.7 | 完成ETL DS伺服器安裝 | manual | 15d | 2017-05-22 | 2017-06-09 |  |
| 21 | 4.8 | 完成資料庫伺服器安裝 | manual | 15d | 2017-05-22 | 2017-06-09 |  |
| 22 | 4.9 | 完成檔案伺服器安裝 | manual | 15d | 2017-05-22 | 2017-06-09 |  |
| 23 | 4.10 | 完成日誌檢索伺服器安裝 | manual | 15d | 2017-05-22 | 2017-06-09 |  |
| 24 | 4.11 | 完成影像顯示器安裝 | manual | 5d | 2017-05-22 | 2017-05-26 |  |
| 25 | 4.12 | 完成A類資料庫安裝 | manual | 15d | 2017-05-22 | 2017-06-09 |  |
| 26 | 4.13 | 完成B類資料庫安裝 | manual | 15d | 2017-05-22 | 2017-06-09 |  |
| 27 | 4.14 | 完成網路電源施工 | manual | 10d | 2017-05-22 | 2017-06-02 |  |
| 28 | 4.15 | 完成巨量三項軟體工具確認 | manual | 1d | 2017-05-22 | 2017-05-22 |  |
| 29 | 4.16 | 縣市警察局載具配置點資料提供與確認 | manual | 1d | 2017-05-22 | 2017-05-22 |  |

| ID | WBS | Task | Type | Duration | Start | Finish | Predecessors | Total slack | Constraint |
| --- | --- | --- | --- | --- | --- | --- | --- | --- | --- |
| 30 | 5 | **巨量平台** |  | 15d | 2017-05-16 | 2017-06-05 |  |  |  |
| 31 | 5.1 | 測試環境建置 | manual | 10d | 2017-05-16 | 2017-05-29 |  |  |  |
| 32 | 5.2 | ETL DS Server安裝 | manual | 10d | 2017-05-16 | 2017-05-29 |  |  |  |
| 33 | 5.3 | 線上系統名稱與數據節點設定 | manual | 15d | 2017-05-16 | 2017-06-05 |  |  |  |
| 34 | 6 | **系統分析(巨量分析、AP系統)** |  | 55d | 2017-05-15 | 2017-07-28 |  | 0d |  |
| 35 | 6.1 | 系統及技術可行性分析 | manual | 15d | 2017-05-15 | 2017-06-02 |  |  |  |
| 36 | 6.2 | 定義系統作業與管理流程 | manual | 10d | 2017-06-05 | 2017-06-16 |  |  |  |
| 37 | 6.3 | 定義界面功能需求與規格 | manual | 20d | 2017-06-19 | 2017-07-14 |  |  |  |
| 38 | 6.4 | 第一次系統訪談 | manual | 2d | 2017-05-16 | 2017-05-17 |  |  |  |
| 39 | 6.5 | 第二次系統訪談 | manual | 1d | 2017-06-09 | 2017-06-09 |  |  |  |
| 40 | 6.6 | 第三次系統訪談 | manual | 1d | 2017-06-15 | 2017-06-15 |  |  |  |
| 41 | 6.7 | 系統需求規格書撰寫與審查 | manual | 9d | 2017-07-17 | 2017-07-27 |  |  |  |
| 42 | 6.8 | 系統需求規格書交付 |  | 1d | 2017-07-28 | 2017-07-28 |  | 67d | start no earlier than 2017-07-28 |
| 43 | 7 | **系統設計(巨量分析、AP系統)** |  | 25d | 2017-07-31 | 2017-09-01 |  | 0d |  |
| 44 | 7.1 | 系統功能與流程設計 | manual | 5d | 2017-07-31 | 2017-08-04 |  |  |  |
| 45 | 7.2 | 系統UI界面設計 | manual | 5d | 2017-08-07 | 2017-08-11 |  |  |  |
| 46 | 7.3 | 與其他系統資料介接格式設計 | manual | 5d | 2017-08-14 | 2017-08-18 |  |  |  |
| 47 | 7.4 | 系統設計規格書撰寫與審查 | manual | 9d | 2017-08-21 | 2017-08-31 |  |  |  |
| 48 | 7.5 | 系統設計規格書交付 |  | 1d | 2017-09-01 | 2017-09-01 | 47 | 42d |  |
| 49 | 8 | **系統開發與測試** |  | 105d | 2017-06-08 | 2017-11-01 |  | 0d |  |
| 50 | 8.1 | 系統開發(含資料轉置) | manual | 66d | 2017-07-17 | 2017-10-15 |  |  |  |
| 51 | 8.2 | 系統單元測試 | manual | 20d | 2017-09-15 | 2017-10-12 |  |  |  |
| 52 | 8.3 | **雲端影像調閱系統** |  | 82d | 2017-06-08 | 2017-09-29 |  | 0d |  |
| 53 | 8.3.1 | **跨縣市影像整合** |  | 68d | 2017-06-08 | 2017-09-11 |  | 0d |  |
| 54 | 8.3.1.1 | 署內第一次需求訪談 | manual | 5d | 2017-06-08 | 2017-06-14 |  |  |  |
| 55 | 8.3.1.2 | 三縣市需求訪談 | manual | 2d | 2017-06-08 | 2017-06-09 |  |  |  |

| ID | WBS | Task | Type | Duration | Start | Finish | Predecessors | Total slack | Free slack | Constraint |
| --- | --- | --- | --- | --- | --- | --- | --- | --- | --- | --- |
| 56 | 8.3.1.3 | **雲林縣** |  | 4d | 2017-06-19 | 2017-06-22 |  | 0d |  |  |
| 57 | 8.3.1.3.1 | 取得測試環境及SDK | manual | 1d | 2017-06-19 | 2017-06-19 |  |  |  |  |
| 58 | 8.3.1.3.2 | 即時影像串流整合 | manual | 1d | 2017-06-20 | 2017-06-20 | 57 |  |  |  |
| 59 | 8.3.1.3.3 | 歷史影像串流整合 | manual | 1d | 2017-06-21 | 2017-06-21 | 58 |  |  |  |
| 60 | 8.3.1.3.4 | 錄影檔案下載整合 | manual | 1d | 2017-06-22 | 2017-06-22 | 59 |  |  |  |
| 61 | 8.3.1.3.5 | 事件偵測 整合 | manual | 1d | 2017-06-20 | 2017-06-20 | 57 |  |  |  |
| 62 | 8.3.1.4 | **嘉義市** |  | 51d | 2017-06-19 | 2017-08-28 |  | 0d |  |  |
| 63 | 8.3.1.4.1 | 取得測試環境及SDK | manual | 20d | 2017-06-19 | 2017-07-14 |  |  |  |  |
| 64 | 8.3.1.4.2 | 即時影像串流整合 | manual | 20d | 2017-07-17 | 2017-08-11 | 63 |  |  |  |
| 65 | 8.3.1.4.3 | 歷史影像串流整合 | manual | 30d | 2017-07-18 | 2017-08-28 | 64 |  |  |  |
| 66 | 8.3.1.4.4 | 錄影檔案下載整合 | manual | 20d | 2017-07-19 | 2017-08-15 | 65 |  |  |  |
| 67 | 8.3.1.4.5 | 事件偵測 整合 | manual | 20d | 2017-07-17 | 2017-08-11 | 63 |  |  |  |
| 68 | 8.3.1.5 | **嘉義縣** |  | 61d | 2017-06-19 | 2017-09-11 |  | 0d |  |  |
| 69 | 8.3.1.5.1 | 取得測試環境及SDK | manual | 20d | 2017-06-19 | 2017-07-14 |  |  |  |  |
| 70 | 8.3.1.5.2 | 即時影像串流整合 | manual | 40d | 2017-07-17 | 2017-09-08 | 69 |  |  |  |
| 71 | 8.3.1.5.3 | 歷史影像串流整合 | manual | 40d | 2017-07-17 | 2017-09-08 | 69 |  |  |  |
| 72 | 8.3.1.5.4 | 錄影檔案下載整合 | manual | 20d | 2017-08-10 | 2017-09-06 |  |  |  |  |
| 73 | 8.3.1.5.5 | 事件偵測 整合 | manual | 20d | 2017-08-15 | 2017-09-11 | 70 |  |  |  |
| 74 | 8.3.2 | 介接影像調閱平台 | manual | 14d | 2017-09-12 | 2017-09-29 | 57, 58, 59, 60, 61, 63, 64, 65, 66, 67, 69, 70, 71, 72, 73FF |  |  |  |
| 75 | 8.3.3 | 擴充監視器圖層 | manual | 45d | 2017-07-03 | 2017-09-01 |  |  |  |  |
| 76 | 8.4 | 系統整合測試計畫撰寫與審查 |  | 9d | 2017-09-11 | 2017-09-21 |  | 42d | 0d | start no earlier than 2017-09-11 |
| 77 | 8.5 | 系統整合測試計畫交付 | manual | 1d | 2017-09-22 | 2017-09-22 | 76 |  |  |  |
| 78 | 8.6 | 系統使用手冊撰寫與審查 | manual | 9d | 2017-09-11 | 2017-09-21 |  |  |  |  |
| 79 | 8.7 | 系統使用手冊交付 | manual | 1d | 2017-09-22 | 2017-09-22 | 78 |  |  |  |
| 80 | 8.8 | 系統操作手冊撰寫與審查 | manual | 9d | 2017-09-11 | 2017-09-21 |  |  |  |  |
| 81 | 8.9 | 系統操作手冊交付 | manual | 1d | 2017-09-22 | 2017-09-22 |  |  |  |  |
| 82 | 8.10 | 系統上線計畫書撰寫與審查 | manual | 11d | 2017-10-02 | 2017-10-16 |  |  |  |  |
| 83 | 8.11 | 系統上線計畫書交付 | manual | 1d | 2017-10-17 | 2017-10-17 |  |  |  |  |
| 84 | 8.12 | 系統保固計畫書撰寫與審查 | manual | 11d | 2017-10-02 | 2017-10-16 |  |  |  |  |
| 85 | 8.13 | 系統保固計畫書交付 | manual | 1d | 2017-10-17 | 2017-10-17 |  |  |  |  |
| 86 | 8.14 | 整合測試 | manual | 9d | 2017-10-15 | 2017-10-25 |  |  |  |  |
| 87 | 8.15 | 系統整合測試報告撰寫與審查 | manual | 7d | 2017-10-23 | 2017-10-31 |  |  |  |  |
| 88 | 8.16 | 系統整合測試報告交付 | manual | 1d | 2017-11-01 | 2017-11-01 |  |  |  |  |
| 89 | 8.17 | 原始碼掃描 | manual | 5d | 2017-10-26 | 2017-11-01 |  |  |  |  |

| ID | WBS | Task | Type | Duration | Start | Finish | Total slack | Constraint |
| --- | --- | --- | --- | --- | --- | --- | --- | --- |
| 90 | 9 | **報驗與驗收文件** |  | 37d | 2017-10-02 | 2017-11-21 | 0d |  |
| 91 | 9.1 | 系統驗證方法手冊撰寫與審查 | manual | 11d | 2017-10-02 | 2017-10-16 |  |  |
| 92 | 9.2 | 系統驗證方法手冊交付 | manual | 1d | 2017-10-17 | 2017-10-17 |  |  |
| 93 | 9.3 | 程式碼原始光碟準備與審查 | manual | 7d | 2017-10-23 | 2017-10-31 |  |  |
| 94 | 9.4 | 程式原始碼光碟交付 | manual | 1d | 2017-11-01 | 2017-11-01 |  |  |
| 95 | 9.5 | 報驗 | manual | 1d | 2017-11-21 | 2017-11-21 |  |  |
| 96 | 10 | **教育訓練與輔導上線** |  | 82d | 2017-10-02 | 2018-01-23 | 0d |  |
| 97 | 10.1 | 教育練計畫書撰寫與審查 | manual | 11d | 2017-10-02 | 2017-10-16 |  |  |
| 98 | 10.2 | 教育訓練計畫書交付 | manual | 1d | 2017-10-17 | 2017-10-17 |  |  |
| 99 | 10.3 | 各縣市載具配發(預估) |  | 5d | 2017-12-04 | 2017-12-08 | 32d | start no earlier than 2017-12-04 |
| 100 | 10.4 | 辦理教育訓練(預估) | manual | 15d | 2018-01-03 | 2018-01-23 |  |  |
